# Smart Text Content Moderation

Schedule from MS Project, 2021-02-08 to 2021-05-10, costs in €.

## Calendars

- Smart Text Content Moderation Calendar: Mon-Fri 08:00-12:00, 13:00-17:00; Sat-Sun off. Exceptions (off unless hours are given): 2021-02-11 (Thursday before Lent), 2021-02-14 (Carnival), 2021-02-16 (Shrove Tuesday), 2021-04-04 (Easter), 2021-04-05 (Easter Monday), 2021-04-25 (Liberation's Day), 2021-05-01 (Worker's Day).

## Resources

| Resource | Group | Rate |
| --- | --- | --- |
| Project Manager | Project Manager | 95 |
| Data Scientists | Data Scientists | 75 |
| Developers | Developers | 55 |
| System Administrator | System Administrator | 65 |
| Video conferencing software license |  | 0.21 |

## Schedule

| ID | WBS | Task | Type | Duration | Start | Finish | Predecessors | Total slack | Resources | Work | Cost |
| --- | --- | --- | --- | --- | --- | --- | --- | --- | --- | --- | --- |
| 1 | 1 | Project's kickoff | milestone | 0d | 2021-02-08 | 2021-02-08 |  | 0d |  |  |  |
| 2 | 2 | **PM Activities** |  | 62.5d | 2021-02-08 | 2021-05-10 |  | 0d | Project Manager [40%] | 200h | 19,000 |
| 3 | 2.1 | Start of PM activities | milestone | 0d | 2021-02-08 | 2021-02-08 | 1SS | 62.5d |  |  |  |
| 4 | 2.2 | End of PM activities | milestone | 0d | 2021-05-10 | 2021-05-10 | 82FF | 0d |  |  |  |
| 5 | 3 | **Video conferencing activities** |  | 62.5d | 2021-02-08 | 2021-05-10 |  | 0d | Video conferencing software license | 500h | 105 |
| 6 | 3.1 | Start of video conferencing activities | milestone | 0d | 2021-02-08 | 2021-02-08 | 1SS | 62.5d |  |  |  |
| 7 | 3.2 | End of video conferencing activities | milestone | 0d | 2021-05-10 | 2021-05-10 | 82FF | 0d |  |  |  |
| 8 | 4 | **Data Understanding** |  | 8.5d | 2021-02-08 | 2021-02-22 | 1 | 0d |  | 232h | 17,400 |
| 9 | 4.1 | **Collect Data** |  | 2d | 2021-02-08 | 2021-02-09 |  | 0d |  | 64h | 4,800 |
| 10 | 4.1.1 | Collect initial data from LiveWorld databases |  | 2d | 2021-02-08 | 2021-02-09 |  | 0d | Data Scientists [200%] | 32h | 2,400 |
| 11 | 4.1.2 | Collect examples of posts' answers from LiveWorld |  | 1d | 2021-02-08 | 2021-02-08 | 10SS | 0d | Data Scientists [200%] | 16h | 1,200 |
| 12 | 4.1.3 | Add answers' examples taken from open source datasets |  | 1d | 2021-02-09 | 2021-02-09 | 11 | 0d | Data Scientists [200%] | 16h | 1,200 |
| 13 | 4.1.4 | Datasets collected | milestone | 0d | 2021-02-09 | 2021-02-09 | 12FF, 10FF | 0d |  |  |  |
| 14 | 4.2 | **Describe Data** |  | 2.5d | 2021-02-10 | 2021-02-15 | 9 | 0d |  | 72h | 5,400 |
| 15 | 4.2.1 | Understand post classification adopted by LiveWorld |  | 4h | 2021-02-10 | 2021-02-10 |  | 0d | Data Scientists [200%] | 8h | 600 |
| 16 | 4.2.2 | Perform attributes general analysis |  | 2d | 2021-02-10 | 2021-02-15 | 15 | 0d | Data Scientists [400%] | 64h | 4,800 |
| 17 | 4.3 | **Explore and Understand Data** |  | 2d | 2021-02-15 | 2021-02-18 | 14 | 0d |  | 32h | 2,400 |
| 18 | 4.3.1 | Analyse words distribution |  | 1d | 2021-02-15 | 2021-02-17 |  | 0d | Data Scientists [200%] | 16h | 1,200 |
| 19 | 4.3.2 | Compare it with stopwords distribution to identify most suitable set |  | 1d | 2021-02-17 | 2021-02-18 | 18 | 0d | Data Scientists [200%] | 16h | 1,200 |
| 20 | 4.4 | Verify Data Quality |  | 2d | 2021-02-18 | 2021-02-22 | 17 | 0d | Data Scientists [400%] | 64h | 4,800 |
| 21 | 4.5 | Preliminary data analysis finished | milestone | 0d | 2021-02-22 | 2021-02-22 | 20 | 0d |  |  |  |
| 22 | 5 | **Data Preparation** |  | 7.5d | 2021-02-22 | 2021-03-03 | 8 | 0d |  | 184h | 13,800 |
| 23 | 5.1 | Select data to be used in the modeling phase |  | 1d | 2021-02-22 | 2021-02-23 |  | 0d | Data Scientists [400%] | 32h | 2,400 |
| 24 | 5.2 | **Clean Data** |  | 2.5d | 2021-02-23 | 2021-02-25 | 23 | 0d |  | 48h | 3,600 |
| 25 | 5.2.1 | Remove null/empty/non-english posts |  | 4h | 2021-02-23 | 2021-02-23 |  | 0d | Data Scientists [200%] | 8h | 600 |
| 26 | 5.2.2 | Remove posts not related with the considered categories |  | 1d | 2021-02-23 | 2021-02-24 | 25SS | 0d | Data Scientists [200%] | 16h | 1,200 |
| 27 | 5.2.3 | Remove invalid characters/expressions |  | 1d | 2021-02-24 | 2021-02-25 | 26, 25 | 0d | Data Scientists [200%] | 16h | 1,200 |
| 28 | 5.2.4 | Removing stopwords using identified set |  | 4h | 2021-02-25 | 2021-02-25 | 27 | 0d | Data Scientists [200%] | 8h | 600 |
| 29 | 5.3 | Construct Data |  | 2d | 2021-02-26 | 2021-03-01 | 24 | 0d | Data Scientists [400%] | 64h | 4,800 |
| 30 | 5.4 | Integrate answering data with custom examples of LiveWorld experts |  | 1d | 2021-03-02 | 2021-03-02 | 29 | 0d | Data Scientists [200%] | 16h | 1,200 |

| ID | WBS | Task | Type | Duration | Start | Finish | Predecessors | Total slack | Free slack | Resources | Work | Cost |
| --- | --- | --- | --- | --- | --- | --- | --- | --- | --- | --- | --- | --- |
| 31 | 5.5 | **Format Data** |  | 1d | 2021-03-03 | 2021-03-03 | 30 | 0d |  |  | 24h | 1,800 |
| 32 | 5.5.1 | Bring all texts to the required format |  | 4h | 2021-03-03 | 2021-03-03 |  | 0d |  | Data Scientists [200%] | 8h | 600 |
| 33 | 5.5.2 | Ensure posts/answers classification is homogeneous |  | 1d | 2021-03-03 | 2021-03-03 | 32SS | 0d |  | Data Scientists [200%] | 16h | 1,200 |
| 34 | 5.6 | Datasets ready to be used | milestone | 0d | 2021-03-03 | 2021-03-03 | 32FF, 33FF | 0d |  |  |  |  |
| 35 | 6 | **Modeling** |  | 14d | 2021-03-04 | 2021-03-23 | 22 | 0d |  |  | 408h | 30,600 |
| 36 | 6.1 | **Select Modeling techniques** |  | 2d | 2021-03-04 | 2021-03-05 |  | 0d |  |  | 64h | 4,800 |
| 37 | 6.1.1 | Select modeling technique for post classification model |  | 2d | 2021-03-04 | 2021-03-05 |  | 0d |  | Data Scientists [200%] | 32h | 2,400 |
| 38 | 6.1.2 | Select modeling technique for answering module |  | 2d | 2021-03-04 | 2021-03-05 | 37SS | 0d |  | Data Scientists [200%] | 32h | 2,400 |
| 39 | 6.2 | Divide post classification dataset in three parts (train/validation/test) and perform related sanity checks |  | 1d | 2021-03-08 | 2021-03-08 | 36 | 0d |  | Data Scientists [200%] | 16h | 1,200 |
| 40 | 6.3 | **Build Models** |  | 8d | 2021-03-09 | 2021-03-18 | 39 | 0d |  |  | 240h | 18,000 |
| 41 | 6.3.1 | **Build predictive model** |  | 8d | 2021-03-09 | 2021-03-18 |  | 0d |  |  | 128h | 9,600 |
| 42 | 6.3.1.1 | Build chosen model |  | 5d | 2021-03-09 | 2021-03-15 |  | 0d |  | Data Scientists [200%] | 80h | 6,000 |
| 43 | 6.3.1.2 | Tune hyperparameters |  | 3d | 2021-03-16 | 2021-03-18 | 42 | 0d |  | Data Scientists [200%] | 48h | 3,600 |
| 44 | 6.3.2 | **Build answering model** |  | 7d | 2021-03-09 | 2021-03-17 | 41SS | 1d |  |  | 112h | 8,400 |
| 45 | 6.3.2.1 | Build chosen model |  | 4d | 2021-03-09 | 2021-03-12 |  | 1d | 0d | Data Scientists [200%] | 64h | 4,800 |
| 46 | 6.3.2.2 | Tune hyperparameters |  | 3d | 2021-03-15 | 2021-03-17 | 45 | 1d |  | Data Scientists [200%] | 48h | 3,600 |
| 47 | 6.3.3 | Modeling phase finished | milestone | 0d | 2021-03-18 | 2021-03-18 | 41FF, 44FF | 0d |  |  |  |  |
| 48 | 6.4 | **Assess Model** |  | 2.5d | 2021-03-19 | 2021-03-23 | 40 | 0d |  |  | 80h | 6,000 |
| 49 | 6.4.1 | Evaluate models on chosen metrics |  | 4h | 2021-03-19 | 2021-03-19 |  | 0d |  | Data Scientists [400%] | 16h | 1,200 |
| 50 | 6.4.2 | Analyse potential deployment of both modules |  | 2d | 2021-03-19 | 2021-03-23 | 49 | 0d |  | Data Scientists [400%] | 64h | 4,800 |
| 51 | 6.5 | Exports models for real time usage |  | 4h | 2021-03-23 | 2021-03-23 | 48 | 0d |  | Data Scientists [200%] | 8h | 600 |
| 52 | 6.6 | Models delivered | milestone | 0d | 2021-03-23 | 2021-03-23 | 51 | 0d |  |  |  |  |
| 53 | 7 | **Evaluation** |  | 5d | 2021-03-24 | 2021-03-30 | 35 | 0d |  |  | 160h | 12,000 |
| 54 | 7.1 | Evaluate models results |  | 2d | 2021-03-24 | 2021-03-25 |  | 0d |  | Data Scientists [400%] | 64h | 4,800 |

| ID | WBS | Task | Type | Duration | Start | Finish | Predecessors | Total slack | Constraint | Resources | Work | Cost |
| --- | --- | --- | --- | --- | --- | --- | --- | --- | --- | --- | --- | --- |
| 55 | 7.2 | **Review Process** |  | 3d | 2021-03-26 | 2021-03-30 | 54 | 0d |  |  | 96h | 7,200 |
| 56 | 7.2.1 | Review data science process of modeling |  | 2d | 2021-03-26 | 2021-03-29 |  | 0d |  | Data Scientists [400%] | 64h | 4,800 |
| 57 | 7.2.2 | Document chosen alternatives and possible improvements |  | 1d | 2021-03-30 | 2021-03-30 | 56 | 0d |  | Data Scientists [400%] | 32h | 2,400 |
| 58 | 7.3 | Final decision on integration of answering module | milestone | 0d | 2021-03-30 | 2021-03-30 | 55FF | 0d |  |  |  |  |
| 59 | 7.4 | Documented evaluation delivered | milestone | 0d | 2021-03-30 | 2021-03-30 | 55FF | 0d |  |  |  |  |
| 60 | 8 | **Models integration and web service development** |  | 6d | 2021-03-31 | 2021-04-08 | 53 | 0d |  |  | 96h | 6,240 |
| 61 | 8.1 | **Development of web service** |  | 6d | 2021-03-31 | 2021-04-08 |  | 0d |  |  | 96h | 6,240 |
| 62 | 8.1.1 | Develop integrating module |  | 2d | 2021-03-31 | 2021-04-01 |  | 0d |  | Developers; Data Scientists | 32h | 2,080 |
| 63 | 8.1.2 | Develop web service module |  | 4d | 2021-04-02 | 2021-04-08 | 62SS+2d | 0d |  | Developers; Data Scientists | 64h | 4,160 |
| 64 | 8.2 | Web service and integrating modules completed | milestone | 0d | 2021-04-08 | 2021-04-08 | 61 | 0d |  |  |  |  |
| 65 | 9 | **Deployment** |  | 21.5d | 2021-04-09 | 2021-05-10 | 60 | 0d |  |  | 808h | 52,520 |
| 66 | 9.1 | **Plan Deployment** |  | 2.5d | 2021-04-09 | 2021-04-13 |  | 0d |  |  | 84h | 5,460 |
| 67 | 9.1.1 | Define strategy for integrating the web service |  | 2d | 2021-04-09 | 2021-04-12 |  | 0d |  | Developers [200%]; System Administrator; Data Scientists [200%] | 80h | 5,200 |
| 68 | 9.1.2 | Identify target machines |  | 4h | 2021-04-13 | 2021-04-13 | 67 | 0d |  | System Administrator | 4h | 260 |
| 69 | 9.2 | **Plan Monitoring and Maintenance** |  | 3.5d | 2021-04-13 | 2021-04-16 | 66 | 0d |  |  | 152h | 10,120 |
| 70 | 9.2.1 | Define updating models' strategies |  | 2d | 2021-04-13 | 2021-04-15 |  | 0d |  | Data Scientists [200%]; Developers [200%]; System Administrator | 80h | 5,200 |
| 71 | 9.2.2 | Define human monitoring strategy and intervention |  | 1.5d | 2021-04-15 | 2021-04-16 | 70 | 0d |  | Data Scientists [400%]; Developers [200%] | 72h | 4,920 |
| 72 | 9.3 | Deploy web service in existing system |  | 4d | 2021-04-19 | 2021-04-22 | 69 | 0d |  | Developers [200%]; System Administrator | 96h | 5,600 |
| 73 | 9.4 | Test the deployed service |  | 5d | 2021-04-23 | 2021-04-29 | 72 | 0d |  | Developers [200%]; Data Scientists [200%]; System Administrator | 200h | 13,000 |
| 74 | 9.5 | Deployment finished | milestone | 0d | 2021-04-29 | 2021-04-29 | 73FF | 0d |  |  |  |  |
| 75 | 9.6 | **Produce Final reports and documentation** |  | 3.5d | 2021-04-30 | 2021-05-05 | 74 | 0d |  |  | 140h | 9,100 |
| 76 | 9.6.1 | Outline report's structure |  | 4h | 2021-04-30 | 2021-04-30 |  | 0d |  | Data Scientists [200%]; Developers [200%]; System Administrator | 20h | 1,300 |
| 77 | 9.6.2 | Write final report |  | 3d | 2021-04-30 | 2021-05-05 | 76 | 0d |  | Data Scientists [200%]; Developers [200%]; System Administrator | 120h | 7,800 |
| 78 | 9.7 | **Review Project** |  | 3d | 2021-05-05 | 2021-05-10 | 75 | 0d |  |  | 136h | 9,240 |
| 79 | 9.7.1 | Interview users |  | 1d | 2021-05-05 | 2021-05-06 |  | 0d |  | Data Scientists [200%]; Developers | 24h | 1,640 |
| 80 | 9.7.2 | Analyse overall process based on feedback |  | 2d | 2021-05-06 | 2021-05-10 | 79 | 0d |  | Data Scientists [400%]; Developers [200%]; System Administrator | 112h | 7,600 |
| 81 | 9.8 | Final report produced | milestone | 0d | 2021-05-10 | 2021-05-10 | 78FF | 0d |  |  |  |  |
| 82 | 10 | Project's end | milestone | 0d | 2021-05-10 | 2021-05-10 | 65FF | 0d | finish no later than 2021-05-13 |  |  |  |
